Task ID,Section,Description,Owner,Dependencies,Pre-requisites,Definition of Done,Status,KPIs,Target Sprint,Artifacts To Track,Validation Method,Estimate (O/M/P),Planned Start,Planned Finish,Percent Complete,Dependency Types,Cadence
PG-012,Public Pages,Career Detail,Growth FE (STOA-Foundation),"PG-011,GTM-002,BRAND-001",FILE:docs/design/page-registry.md;FILE:.specify/memory/Framework.md;FILE:audit-matrix.yml;ENV:Job description template;POLICY:requirements clear;FILE:apps/web/src/app/(public)/careers/page.tsx;FILE:docs/company/messaging/positioning.md;FILE:docs/company/brand/visual-identity.md;FILE:docs/company/brand/style-guide.md;FILE:docs/company/brand/dos-and-donts.md;FILE:docs/company/brand/accessibility-patterns.md,"Response <200ms, Lighthouse ≥90, apply button working; artifacts: page.tsx, job-detail-template.tsx, apply-button.tsx",Completed,"Job details shown, requirements clear, apply working",12,ARTIFACT:apps/web/src/app/(public)/careers/[id]/page.tsx;ARTIFACT:apps/web/src/components/shared/job-detail-template.tsx;ARTIFACT:apps/web/src/components/shared/apply-button.tsx;EVIDENCE:.specify/sprints/sprint-12/attestations/PG-012/attestation.json,GATE:lighthouse-gte-90;VALIDATE:pnpm --filter @intelliflow/web typecheck;VALIDATE:pnpm --filter @intelliflow/web test --run,60/120/240,2026-06-06,2026-06-10,100,"PG-011:FS,GTM-002:FS,BRAND-001:FS",
PG-013,Marketing Pages,Landing Page Template,Growth FE (STOA-Foundation),"PG-001,GTM-002,BRAND-001",FILE:docs/design/page-registry.md;FILE:.specify/memory/Framework.md;FILE:audit-matrix.yml;ENV:Landing page builder;ENV:A/B testing ready;FILE:docs/company/messaging/positioning.md;FILE:docs/company/brand/visual-identity.md;FILE:docs/company/brand/style-guide.md;FILE:docs/company/brand/dos-and-donts.md;FILE:docs/company/brand/accessibility-patterns.md,"Response <200ms, Lighthouse ≥90, conversions tracked; artifacts: page.tsx, landing-builder.tsx, ab-test-framework.ts; verified by: pnpm test",Completed,"Landing pages generating, A/B tests running",12,ARTIFACT:apps/web/src/app/(public)/lp/[slug]/page.tsx;ARTIFACT:apps/web/src/components/shared/landing-builder.tsx;ARTIFACT:apps/web/src/lib/shared/ab-test-framework.ts;ARTIFACT:apps/web/src/data/landing-pages.json;EVIDENCE:.specify/sprints/sprint-12/attestations/PG-013/attestation.json,VALIDATE:pnpm test;GATE:lighthouse-gte-90,90/180/360,2026-06-08,2026-06-14,100,"PG-001:FS,GTM-002:FS,BRAND-001:FS",
PG-014,Public Pages,Status Page,Growth FE (STOA-Foundation),"PG-001,GTM-002,BRAND-001",FILE:.specify/memory/Framework.md;FILE:audit-matrix.yml;ENV:Status monitoring integrated;ENV:incidents tracked;FILE:docs/company/messaging/positioning.md;FILE:docs/company/brand/visual-identity.md,"Response <200ms, Lighthouse ≥90, real-time updates; artifacts: page.tsx, status-monitor.tsx, incident-tracker.ts",In Progress,"Status displayed, incidents shown, updates real-time",18,ARTIFACT:apps/web/src/app/(public)/status/page.tsx;ARTIFACT:apps/web/src/components/status/status-monitor.tsx;ARTIFACT:apps/web/lib/status/incident-tracker.ts;EVIDENCE:.specify/sprints/sprint-12/attestations/PG-014/attestation.json,GATE:lighthouse-gte-90;VALIDATE:pnpm --filter @intelliflow/web typecheck;VALIDATE:pnpm --filter @intelliflow/web test --run,60/120/240,2026-10-06,2026-10-10,50,"PG-001:FS,GTM-002:FS,BRAND-001:FS",
PG-015,Auth Pages,Sign In,Platform FE (STOA-Foundation),"IFC-006,IFC-076,IFC-098",IMPLEMENTS:FLOW-001;FILE:.specify/memory/Framework.md;FILE:audit-matrix.yml;FILE:apps/web/src/components/shared/auth-background.tsx;FILE:apps/web/src/components/shared/auth-card.tsx;FILE:apps/web/src/components/shared/password-input.tsx;FILE:apps/web/src/components/shared/trust-indicators.tsx;FILE:apps/web/src/lib/auth/AuthContext.tsx;FILE:packages/validators/src/auth.ts;FILE:apps/api/src/lib/supabase.ts;ENV:Auth flow designed;ENV:SSO configured,"Response <200ms, Lighthouse ≥90, auth working; artifacts: page.tsx, auth-providers.tsx, login-security.ts; verified by: pnpm test",Completed,"Login functional, SSO working, security validated",13,ARTIFACT:apps/web/src/app/(public)/login/page.tsx;ARTIFACT:apps/web/src/components/shared/auth-providers.tsx;ARTIFACT:apps/web/src/lib/shared/login-security.ts;EVIDENCE:.specify/sprints/sprint-13/execution/PG-015/20260125-173318/PG-015-delivery.md;ARTIFACT:docs/architecture/adr/ADR-020-public-site-auth.md;ARTIFACT:docs/planning/prd-public-site-auth.md,VALIDATE:pnpm test;GATE:lighthouse-gte-90,90/180/360,2026-06-14,2026-06-18,100,"IFC-006:FS,IFC-076:FS,IFC-098:FS",
PG-016,Auth Pages,Sign Up,Platform FE (STOA-Foundation),"PG-015,IFC-006",FILE:.specify/memory/Framework.md;FILE:audit-matrix.yml;FILE:apps/web/src/app/(public)/login/page.tsx;FILE:apps/web/src/components/shared/auth-background.tsx;FILE:apps/web/src/components/shared/auth-card.tsx;FILE:apps/web/src/components/shared/password-input.tsx;FILE:apps/web/src/components/shared/trust-indicators.tsx;FILE:apps/web/src/lib/auth/AuthContext.tsx;FILE:packages/validators/src/auth.ts;ENV:Registration flow;ENV:validation rules,"Response <200ms, Lighthouse ≥90, registration working; artifacts: page.tsx, registration-form.tsx, welcome-email.ts",Completed,"Signup working, validation active, welcome email sent, HaveIBeenPwned breach check, rate limiting",13,ARTIFACT:apps/web/src/app/(public)/signup/page.tsx;ARTIFACT:apps/web/src/components/shared/registration-form.tsx;ARTIFACT:apps/web/src/lib/shared/welcome-email.ts;ARTIFACT:apps/web/src/lib/shared/password-breach-check.ts;ARTIFACT:apps/web/src/lib/shared/signup-rate-limiter.ts;EVIDENCE:.specify/sprints/sprint-13/attestations/PG-016/attestation.json;ARTIFACT:docs/architecture/adr/ADR-020-public-site-auth.md;ARTIFACT:docs/planning/prd-public-site-auth.md,GATE:lighthouse-gte-90;VALIDATE:pnpm --filter @intelliflow/web typecheck;VALIDATE:pnpm --filter @intelliflow/web test --run,90/180/360,2026-06-16,2026-06-20,100,"PG-015:FS,IFC-006:FS",
PG-017,Auth Pages,Sign Up Success,Platform FE (STOA-Foundation),PG-016,FILE:.specify/memory/Framework.md;FILE:audit-matrix.yml;FILE:apps/web/src/app/(public)/signup/page.tsx;FILE:apps/web/src/components/shared/auth-background.tsx;FILE:apps/web/src/components/shared/auth-card.tsx;FILE:apps/web/src/components/shared/trust-indicators.tsx;ENV:Success message;POLICY:next steps defined,"Response <200ms, Lighthouse ≥90, onboarding started; artifacts: page.tsx, onboarding-flow.tsx, tracking-pixel.ts",Completed,"Success shown, onboarding initiated, tracking active",13,ARTIFACT:apps/web/src/app/(public)/signup/success/page.tsx;ARTIFACT:apps/web/src/components/shared/onboarding-flow.tsx;ARTIFACT:apps/web/src/lib/shared/tracking-pixel.ts;EVIDENCE:.specify/sprints/sprint-13/attestations/PG-017/attestation.json;EVIDENCE:.specify/sprints/sprint-13/attestations/PG-017/attestation.json,GATE:lighthouse-gte-90;VALIDATE:pnpm --filter @intelliflow/web typecheck;VALIDATE:pnpm --filter @intelliflow/web test --run,60/120/240,2026-06-18,2026-06-20,100,PG-016:FS,
PG-018,Auth Pages,Logout,Platform FE (STOA-Foundation),"PG-015,IFC-006",FILE:.specify/memory/Framework.md;FILE:audit-matrix.yml;FILE:apps/web/src/app/(public)/login/page.tsx;FILE:apps/web/src/components/shared/auth-background.tsx;FILE:apps/web/src/lib/auth/AuthContext.tsx;FILE:apps/web/src/lib/shared/login-security.ts;ENV:Logout flow;ENV:session cleanup,"Response <200ms, Lighthouse ≥90, session cleared; artifacts: page.tsx, session-cleanup.ts, logout-redirect.ts",Completed,"Logout working, session cleared, redirect functional, multi-tab sync, unsaved work modal",13,ARTIFACT:apps/web/src/app/(public)/logout/page.tsx;ARTIFACT:apps/web/src/lib/shared/session-cleanup.ts;ARTIFACT:apps/web/src/lib/shared/logout-redirect.ts;ARTIFACT:apps/web/src/hooks/useLogout.ts;ARTIFACT:apps/web/src/hooks/useUnsavedChanges.tsx;ARTIFACT:apps/web/src/lib/broadcast.ts;ARTIFACT:apps/web/src/components/auth/logout-button.tsx;ARTIFACT:apps/web/src/components/auth/unsaved-work-modal.tsx;EVIDENCE:.specify/sprints/sprint-13/execution/PG-018/20260126-000000/PG-018-delivery.md;ARTIFACT:docs/architecture/adr/ADR-020-public-site-auth.md;ARTIFACT:docs/planning/prd-public-site-auth.md,GATE:lighthouse-gte-90;VALIDATE:pnpm --filter @intelliflow/web typecheck;VALIDATE:pnpm --filter @intelliflow/web test --run,60/120/240,2026-06-17,2026-06-19,100,"PG-015:FS,IFC-006:FS",
PG-019,Auth Pages,Forgot Password,Platform FE (STOA-Foundation),"PG-015,IFC-006",FILE:.specify/memory/Framework.md;FILE:audit-matrix.yml;FILE:apps/web/src/app/(public)/login/page.tsx;FILE:apps/web/src/components/shared/auth-background.tsx;FILE:apps/web/src/components/shared/auth-card.tsx;FILE:apps/web/src/components/shared/trust-indicators.tsx;FILE:apps/web/src/lib/auth/AuthContext.tsx;FILE:packages/validators/src/auth.ts;ENV:Reset flow designed;ENV:email template,"Response <200ms, Lighthouse ≥90, reset email sent; artifacts: page.tsx, reset-email.tsx, reset-token.ts",Completed,"Reset initiated, email sent, link working",13,ARTIFACT:apps/web/src/app/(public)/forgot-password/page.tsx;ARTIFACT:apps/web/src/components/shared/reset-email.tsx;ARTIFACT:apps/web/src/lib/shared/reset-token.ts;EVIDENCE:.specify/sprints/sprint-13/attestations/PG-019/attestation.json,GATE:lighthouse-gte-90;VALIDATE:pnpm --filter @intelliflow/web typecheck;VALIDATE:pnpm --filter @intelliflow/web test --run,60/120/240,2026-06-19,2026-06-21,100,"PG-015:FS,IFC-006:FS",
PG-020,Auth Pages,Reset Password,Platform FE (STOA-Foundation),PG-019,FILE:.specify/memory/Framework.md;FILE:audit-matrix.yml;FILE:apps/web/src/app/(public)/forgot-password/page.tsx;FILE:apps/web/src/components/shared/auth-background.tsx;FILE:apps/web/src/components/shared/auth-card.tsx;FILE:apps/web/src/components/shared/password-input.tsx;FILE:apps/web/src/components/shared/trust-indicators.tsx;FILE:packages/validators/src/auth.ts;ENV:Reset form;POLICY:password requirements,"Response <200ms, Lighthouse ≥90, password updated; artifacts: page.tsx, password-reset.tsx, password-validation.ts",Completed,"Password reset working, requirements enforced, 18 page-level tests, 91 total tests",13,ARTIFACT:apps/web/src/app/(public)/reset-password/[token]/page.tsx;ARTIFACT:apps/web/src/components/shared/password-reset.tsx;ARTIFACT:apps/web/src/lib/shared/password-validation.ts;EVIDENCE:.specify/sprints/sprint-13/attestations/PG-020/attestation.json,GATE:lighthouse-gte-90;VALIDATE:pnpm --filter @intelliflow/web typecheck;VALIDATE:pnpm --filter @intelliflow/web test --run,60/120/240,2026-06-21,2026-06-23,100,PG-019:FS,
PG-021,Auth Pages,MFA Setup,Platform FE (STOA-Foundation),"PG-015,IFC-006,IFC-098",IMPLEMENTS:FLOW-001;FILE:.specify/memory/Framework.md;FILE:audit-matrix.yml;FILE:apps/web/src/app/(public)/login/page.tsx;FILE:apps/web/src/components/auth/mfa-challenge.tsx;FILE:apps/web/src/lib/auth/AuthContext.tsx;FILE:packages/validators/src/auth.ts;FILE:apps/web/src/lib/shared/code-validator.ts;ENV:MFA options;ENV:QR code generation,"Response <200ms, Lighthouse ≥90, MFA enabled; artifacts: page.tsx, mfa-qr-generator.tsx, backup-codes.ts",Completed,"MFA setup working, QR generated, backup codes created",13,ARTIFACT:apps/web/src/app/settings/security/mfa/page.tsx;ARTIFACT:apps/web/src/components/shared/mfa-qr-generator.tsx;ARTIFACT:apps/web/src/lib/shared/backup-codes.ts;EVIDENCE:.specify/sprints/sprint-13/attestations/PG-021/attestation.json,GATE:lighthouse-gte-90;VALIDATE:pnpm --filter @intelliflow/web typecheck;VALIDATE:pnpm --filter @intelliflow/web test --run,90/180/360,2026-06-20,2026-06-24,100,"PG-015:FS,IFC-006:FS,IFC-098:FS",
PG-022,Auth Pages,MFA Verify,Platform FE (STOA-Foundation),"PG-021,PG-015",IMPLEMENTS:FLOW-001;FILE:.specify/memory/Framework.md;FILE:audit-matrix.yml;FILE:apps/web/src/app/settings/security/mfa/page.tsx;FILE:apps/web/src/components/auth/mfa-challenge.tsx;FILE:apps/web/src/components/shared/auth-background.tsx;FILE:apps/web/src/lib/auth/AuthContext.tsx;FILE:packages/validators/src/auth.ts;ENV:Verification flow;ENV:code validation,"Response <200ms, Lighthouse ≥90, verification working; artifacts: page.tsx, mfa-verification.tsx, code-validator.ts",Completed,"MFA verification working, codes validated",13,ARTIFACT:apps/web/src/app/(public)/mfa/verify/page.tsx;ARTIFACT:apps/web/src/components/shared/mfa-verification.tsx;ARTIFACT:apps/web/src/lib/shared/code-validator.ts;EVIDENCE:.specify/sprints/sprint-13/attestations/PG-022/attestation.json,GATE:lighthouse-gte-90;VALIDATE:pnpm --filter @intelliflow/web typecheck;VALIDATE:pnpm --filter @intelliflow/web test --run,60/120/240,2026-02-17,2026-02-18,100,"PG-021:FS,PG-015:FS",
PG-023,Auth Pages,Email Verification,Platform FE (STOA-Foundation),"PG-016,IFC-006",FILE:.specify/memory/Framework.md;FILE:audit-matrix.yml;FILE:apps/web/src/app/(public)/signup/page.tsx;FILE:apps/web/src/components/shared/auth-background.tsx;FILE:apps/web/src/components/shared/auth-card.tsx;FILE:apps/web/src/components/shared/trust-indicators.tsx;FILE:apps/web/src/lib/auth/AuthContext.tsx;FILE:packages/validators/src/auth.ts;ENV:Verification link;ENV:token validation,"Response <200ms, Lighthouse ≥90, email verified; artifacts: page.tsx, email-verification.tsx, account-activation.ts",Completed,"Email verification working, account activated",13,ARTIFACT:apps/web/src/app/(public)/verify-email/[token]/page.tsx;ARTIFACT:apps/web/src/components/shared/email-verification.tsx;ARTIFACT:apps/web/src/lib/shared/account-activation.ts;EVIDENCE:.specify/sprints/sprint-13/attestations/PG-023/attestation.json,GATE:lighthouse-gte-90;VALIDATE:pnpm --filter @intelliflow/web typecheck;VALIDATE:pnpm --filter @intelliflow/web test --run,60/120/240,2026-02-19,2026-02-19,100,"PG-016:FS,IFC-006:FS",
PG-024,Auth Pages,SSO Callback,Platform FE (STOA-Foundation),"PG-015,IFC-006",FILE:.specify/memory/Framework.md;FILE:audit-matrix.yml;FILE:apps/web/src/app/(public)/login/page.tsx;FILE:apps/web/src/components/shared/auth-providers.tsx;FILE:apps/web/src/components/shared/auth-background.tsx;FILE:apps/web/src/components/shared/trust-indicators.tsx;FILE:apps/web/src/lib/auth/AuthContext.tsx;FILE:apps/web/src/lib/shared/login-security.ts;FILE:apps/api/src/lib/supabase.ts;ENV:OAuth callbacks;ENV:token exchange,"Response <200ms, Lighthouse ≥90, SSO complete; artifacts: page.tsx, oauth-callback.tsx, token-exchange.ts",Completed,"SSO callback working, tokens exchanged, user logged in",13,ARTIFACT:apps/web/src/app/(public)/auth/callback/page.tsx;ARTIFACT:apps/web/src/components/shared/oauth-callback.tsx;ARTIFACT:apps/web/src/lib/shared/token-exchange.ts;EVIDENCE:.specify/sprints/sprint-13/attestations/PG-024/attestation.json,GATE:lighthouse-gte-90;VALIDATE:pnpm --filter @intelliflow/web typecheck;VALIDATE:pnpm --filter @intelliflow/web test --run,60/120/240,2026-02-20,2026-02-20,100,"PG-015:FS,IFC-006:FS",
PG-025,Billing Pages,Billing Portal,Platform BE (STOA-Foundation),"IFC-099,IFC-198",IMPLEMENTS:FLOW-048;FILE:docs/planning/prd-billing-portal.md;FILE:docs/architecture/adr/ADR-029-billing-architecture.md;FILE:.specify/memory/Framework.md;FILE:audit-matrix.yml;ENV:Stripe integration;ENV:subscription management;FILE:artifacts/reports/connector-status-dashboard.json,"Response <200ms, Lighthouse ≥90, billing functional; artifacts: page.tsx, billing-portal.tsx, stripe-portal.ts; Stripe integration must be wired to real API (test mode), not mock client",Completed,"Portal working, subscriptions managed, invoices shown",14,ARTIFACT:apps/web/src/app/billing/page.tsx;ARTIFACT:apps/web/src/components/billing/billing-portal.tsx;ARTIFACT:apps/web/src/lib/billing/stripe-portal.ts;EVIDENCE:.specify/sprints/sprint-14/attestations/PG-025/attestation.json,GATE:lighthouse-gte-90;GATE:integration-wired;VALIDATE:pnpm test,120/240/480,2026-06-28,2026-07-03,100,"IFC-099:FS,IFC-198:FS",
PG-026,Billing Pages,Checkout,Platform BE (STOA-Foundation),"PG-025,IFC-198",IMPLEMENTS:FLOW-048;FILE:docs/planning/prd-billing-portal.md;FILE:docs/architecture/adr/ADR-029-billing-architecture.md;FILE:.specify/memory/Framework.md;FILE:audit-matrix.yml;ENV:Payment form;ENV:Stripe Elements;FILE:apps/web/src/app/billing/page.tsx,"Response <200ms, Lighthouse ≥90, payments processing; artifacts: page.tsx, checkout-form.tsx, payment-processor.ts",Completed,"Checkout working, payments processing, receipts sent",14,ARTIFACT:apps/web/src/app/billing/checkout/page.tsx;ARTIFACT:apps/web/src/components/billing/checkout-form.tsx;ARTIFACT:apps/web/src/lib/billing/payment-processor.ts;EVIDENCE:.specify/sprints/sprint-14/attestations/PG-026/attestation.json,GATE:lighthouse-gte-90;VALIDATE:pnpm --filter @intelliflow/web typecheck;VALIDATE:pnpm --filter @intelliflow/web test --run,90/180/360,2026-07-01,2026-07-05,100,"PG-025:FS,IFC-198:FS",
PG-027,Billing Pages,Invoices,Platform BE (STOA-Foundation),"PG-025,IFC-198",IMPLEMENTS:FLOW-048;FILE:docs/planning/prd-billing-portal.md;FILE:docs/architecture/adr/ADR-029-billing-architecture.md;FILE:.specify/memory/Framework.md;FILE:audit-matrix.yml;ENV:Invoice list;ENV:PDF generation;FILE:apps/web/src/app/billing/page.tsx,"Response <200ms, Lighthouse ≥90, invoices displayed; artifacts: page.tsx, invoice-list.tsx, pdf-generator.ts",Completed,"Invoices listed, PDFs generating, downloads working",14,ARTIFACT:apps/web/src/app/billing/invoices/page.tsx;ARTIFACT:apps/web/src/components/billing/invoice-list.tsx;ARTIFACT:apps/web/src/lib/billing/pdf-generator.ts;EVIDENCE:.specify/sprints/sprint-14/attestations/PG-027/attestation.json,GATE:lighthouse-gte-90;VALIDATE:pnpm --filter @intelliflow/web typecheck;VALIDATE:pnpm --filter @intelliflow/web test --run,60/120/240,2026-02-20,2026-02-20,100,"PG-025:FS,IFC-198:FS",
PG-028,Billing Pages,Invoice Detail,Platform BE (STOA-Foundation),"PG-027,IFC-198",IMPLEMENTS:FLOW-048;FILE:docs/planning/prd-billing-portal.md;FILE:docs/architecture/adr/ADR-029-billing-architecture.md;FILE:.specify/memory/Framework.md;FILE:audit-matrix.yml;ENV:Invoice template;ENV:line items shown;FILE:apps/web/src/app/billing/invoices/page.tsx,"Response <200ms, Lighthouse ≥90, details displayed; artifacts: page.tsx, invoice-detail.tsx, invoice-actions.ts",Completed,"Invoice details shown, line items clear, actions available",14,ARTIFACT:apps/web/src/app/billing/invoices/[id]/page.tsx;ARTIFACT:apps/web/src/components/billing/invoice-detail.tsx;ARTIFACT:apps/web/src/lib/billing/invoice-actions.ts;EVIDENCE:.specify/sprints/sprint-14/attestations/PG-028/attestation.json,GATE:lighthouse-gte-90;VALIDATE:pnpm --filter @intelliflow/web typecheck;VALIDATE:pnpm --filter @intelliflow/web test --run,60/120/240,2026-02-22,2026-02-22,100,"PG-027:FS,IFC-198:FS",
PG-029,Billing Pages,Payment Methods,Platform BE (STOA-Foundation),"PG-025,IFC-198",IMPLEMENTS:FLOW-048;FILE:docs/planning/prd-billing-portal.md;FILE:docs/architecture/adr/ADR-029-billing-architecture.md;FILE:.specify/memory/Framework.md;FILE:audit-matrix.yml;ENV:Card management;ENV:default selection;FILE:apps/web/src/app/billing/page.tsx,"Response <200ms, Lighthouse ≥90, cards managed; artifacts: page.tsx, payment-methods.tsx, card-manager.ts",Completed,"Cards managed, defaults set, updates working",14,ARTIFACT:apps/web/src/app/billing/payment-methods/page.tsx;ARTIFACT:apps/web/src/components/billing/payment-methods.tsx;ARTIFACT:apps/web/src/lib/billing/card-manager.ts;ARTIFACT:apps/web/src/components/billing/__tests__/payment-methods.test.tsx;ARTIFACT:apps/web/src/components/billing/__tests__/payment-methods.supplementary.test.tsx;ARTIFACT:apps/web/src/app/billing/payment-methods/__tests__/page.test.tsx;ARTIFACT:apps/web/src/components/billing/index.ts;ARTIFACT:packages/adapters/src/payments/stripe/types.ts;ARTIFACT:packages/adapters/src/payments/stripe/handlers/customers.ts;ARTIFACT:apps/api/src/modules/billing/billing.router.ts;ARTIFACT:apps/api/src/modules/billing/__tests__/billing.router.test.ts;EVIDENCE:.specify/sprints/sprint-14/attestations/PG-029/attestation.json,GATE:lighthouse-gte-90;VALIDATE:pnpm --filter @intelliflow/web typecheck;VALIDATE:pnpm --filter @intelliflow/web test --run,60/120/240,2026-02-22,2026-02-22,100,"PG-025:FS,IFC-198:FS",
PG-030,Billing Pages,Subscriptions,Platform BE (STOA-Foundation),"PG-025,IFC-198",IMPLEMENTS:FLOW-048;FILE:docs/planning/prd-billing-portal.md;FILE:docs/architecture/adr/ADR-029-billing-architecture.md;FILE:.specify/memory/Framework.md;FILE:audit-matrix.yml;ENV:Plan management;ENV:upgrade/downgrade;FILE:apps/web/src/app/billing/page.tsx,"Response <200ms, Lighthouse ≥90, plans managed; artifacts: page.tsx, subscription-manager.tsx, plan-changes.ts",Completed,"Subscriptions managed, changes processed, prorations calculated",14,ARTIFACT:apps/web/src/app/billing/subscriptions/page.tsx;ARTIFACT:apps/web/src/components/billing/subscription-manager.tsx;ARTIFACT:apps/web/src/lib/billing/plan-changes.ts;EVIDENCE:.specify/sprints/sprint-14/attestations/PG-030/attestation.json,GATE:lighthouse-gte-90;VALIDATE:pnpm --filter @intelliflow/web typecheck;VALIDATE:pnpm --filter @intelliflow/web test --run,90/180/360,2026-02-22,2026-02-22,100,"PG-025:FS,IFC-198:FS",
PG-031,Billing Pages,Receipts,Platform BE (STOA-Foundation),"PG-025,IFC-198",IMPLEMENTS:FLOW-048;FILE:docs/planning/prd-billing-portal.md;FILE:docs/architecture/adr/ADR-029-billing-architecture.md;FILE:.specify/memory/Framework.md;FILE:audit-matrix.yml;ENV:Receipt list;ENV:email delivery;FILE:apps/web/src/app/billing/page.tsx,"Response <200ms, Lighthouse ≥90, receipts accessible; artifacts: page.tsx, receipt-list.tsx, receipt-emailer.ts",Completed,"Receipts listed, emails sent, downloads available",14,ARTIFACT:apps/web/src/app/billing/receipts/page.tsx;ARTIFACT:apps/web/src/components/billing/receipt-list.tsx;ARTIFACT:apps/web/src/lib/billing/receipt-emailer.ts;EVIDENCE:.specify/sprints/sprint-14/attestations/PG-031/attestation.json,GATE:lighthouse-gte-90;VALIDATE:pnpm --filter @intelliflow/web typecheck;VALIDATE:pnpm --filter @intelliflow/web test --run,60/120/240,2026-07-08,2026-07-10,100,"PG-025:FS,IFC-198:FS",
PG-032,Developer Pages,Docs Index,DevRel (STOA-Foundation),IFC-079,FILE:.specify/memory/Framework.md;FILE:audit-matrix.yml;ENV:Documentation structure;ENV:search ready;FILE:docs/docusaurus.config.js,"Response <200ms, Lighthouse ≥90, docs searchable; artifacts: page.tsx, docs-search.tsx, docs-navigation.tsx",Completed,"Docs indexed, search working, navigation clear",15,ARTIFACT:apps/web/src/app/(developer)/docs/page.tsx;ARTIFACT:apps/web/src/components/shared/docs-search.tsx;ARTIFACT:apps/web/src/components/shared/docs-navigation.tsx;EVIDENCE:.specify/sprints/sprint-15/attestations/PG-032/attestation.json,GATE:lighthouse-gte-90;VALIDATE:pnpm --filter @intelliflow/web typecheck;VALIDATE:pnpm --filter @intelliflow/web test --run,50/180/360,2026-02-09,2026-02-10,100,IFC-079:FS,
PG-033,Developer Pages,API Docs,DevRel (STOA-Foundation),PG-032,FILE:.specify/memory/Framework.md;FILE:audit-matrix.yml;ENV:API reference;ENV:interactive examples;FILE:apps/web/src/app/(developer)/docs/page.tsx,"Response <200ms, Lighthouse ≥90, examples runnable; artifacts: page.tsx, api-reference-client.tsx (Scalar built-in playground)",Completed,"API documented, examples working, playground active",15,ARTIFACT:apps/web/src/app/(developer)/docs/api/page.tsx;ARTIFACT:apps/web/src/components/shared/api-reference-client.tsx;ARTIFACT:apps/web/src/app/api/openapi/route.ts;ARTIFACT:apps/api/scripts/generate-openapi.ts;EVIDENCE:.specify/sprints/sprint-15/attestations/PG-033/attestation.json;EVIDENCE:.specify/sprints/sprint-15/attestations/PG-033/attestation.json,GATE:lighthouse-gte-90;VALIDATE:pnpm --filter @intelliflow/web typecheck;VALIDATE:pnpm --filter @intelliflow/web test --run,90/180/360,2026-07-14,2026-07-18,100,PG-032:FS,
PG-034,Developer Pages,Webhooks Docs,DevRel (STOA-Foundation),PG-032,FILE:.specify/memory/Framework.md;FILE:audit-matrix.yml;ENV:Webhook events;ENV:payload examples;FILE:apps/web/src/app/(developer)/docs/page.tsx,"Response <200ms, Lighthouse ≥90, webhooks documented; verified by: pnpm test",Completed,"Webhooks documented, examples clear, testing enabled",15,ARTIFACT:apps/web/src/app/(developer)/docs/webhooks/page.tsx;ARTIFACT:apps/web/src/components/developer/webhook-docs.tsx;ARTIFACT:apps/web/src/components/developer/webhook-tester.tsx;EVIDENCE:.specify/sprints/sprint-15/attestations/PG-034/attestation.json,VALIDATE:pnpm test;GATE:lighthouse-gte-90,90/180/360,2026-02-23,2026-02-23,100,PG-032:FS,
PG-035,Developer Pages,Changelog,DevRel (STOA-Foundation),PG-032,FILE:.specify/memory/Framework.md;FILE:audit-matrix.yml;ENV:Version history;ENV:breaking changes;FILE:apps/web/src/app/(developer)/docs/page.tsx,"Response <200ms, Lighthouse ≥90, changelog displayed; artifacts: page.tsx, changelog-display.tsx, rss-feed.ts",Completed,"Changelog shown, versions tracked, RSS feed available",15,ARTIFACT:apps/web/src/app/(developer)/docs/changelog/page.tsx;ARTIFACT:apps/web/src/components/developer/changelog-display.tsx;ARTIFACT:apps/web/src/lib/developer/rss-feed.ts;EVIDENCE:.specify/sprints/sprint-15/attestations/PG-035/attestation.json;EVIDENCE:.specify/sprints/sprint-15/attestations/PG-035/attestation.json,GATE:lighthouse-gte-90;VALIDATE:pnpm --filter @intelliflow/web typecheck;VALIDATE:pnpm --filter @intelliflow/web test --run,60/120/240,2026-07-18,2026-02-24,100,PG-032:FS,
PG-036,Developer Pages,SDK Guides,DevRel (STOA-Foundation),PG-032,FILE:.specify/memory/Framework.md;FILE:audit-matrix.yml;ENV:Language SDKs;ENV:quickstart guides;FILE:docs/company/brand/visual-identity.md;FILE:apps/web/src/app/(developer)/docs/page.tsx,"Response <200ms, Lighthouse ≥90, SDKs documented",Completed,"SDKs documented, quickstarts clear, downloads available",15,ARTIFACT:apps/web/src/app/(developer)/docs/sdk/page.tsx;ARTIFACT:apps/web/src/components/developer/sdk-guides.tsx;ARTIFACT:apps/web/src/lib/developer/sdk-downloads.ts;EVIDENCE:.specify/sprints/sprint-15/attestations/PG-036/attestation.json,GATE:lighthouse-gte-90;VALIDATE:pnpm --filter @intelliflow/web typecheck;VALIDATE:pnpm --filter @intelliflow/web test --run,90/180/360,2026-02-24,2026-02-24,100,PG-032:FS,
PG-037,Developer Pages,CLI Docs,DevRel (STOA-Foundation),PG-032,FILE:.specify/memory/Framework.md;FILE:audit-matrix.yml;ENV:CLI commands;ENV:installation guide;FILE:apps/web/src/app/(developer)/docs/page.tsx,"Response <200ms, Lighthouse ≥90, CLI documented",Completed,"CLI documented, commands listed, examples shown",15,ARTIFACT:apps/web/src/app/(developer)/docs/cli/page.tsx;ARTIFACT:apps/web/src/components/developer/cli-docs.tsx;ARTIFACT:apps/web/src/components/developer/cli-examples.tsx;EVIDENCE:.specify/sprints/sprint-15/attestations/PG-037/attestation.json;EVIDENCE:.specify/sprints/sprint-15/attestations/PG-037/attestation.json,GATE:lighthouse-gte-90;VALIDATE:pnpm --filter @intelliflow/web typecheck;VALIDATE:pnpm --filter @intelliflow/web test --run,60/120/240,2026-02-25,2026-02-25,100,PG-032:FS,
PG-038,Developer Pages,Auth Guides,DevRel (STOA-Foundation),PG-032,FILE:.specify/memory/Framework.md;FILE:audit-matrix.yml;ENV:OAuth flow;ENV:token management;FILE:docs/company/brand/visual-identity.md;FILE:apps/web/src/app/(developer)/docs/page.tsx,"Response <200ms, Lighthouse ≥90, auth explained; artifacts: page.tsx, auth-guides.tsx, auth-examples.tsx",Completed,"Auth documented, flows clear, examples provided; V8 coverage: Stmts 93.54% Branches 83.33% Functions 94.73% Lines 96.55%; 54 tests (4 files); STOA Foundation PASS",15,ARTIFACT:apps/web/src/app/(developer)/docs/auth/page.tsx;ARTIFACT:apps/web/src/components/developer/auth-guides.tsx;ARTIFACT:apps/web/src/components/developer/auth-examples.tsx;EVIDENCE:.specify/sprints/sprint-15/attestations/PG-038/attestation.json,GATE:lighthouse-gte-90;VALIDATE:pnpm --filter @intelliflow/web typecheck;VALIDATE:pnpm --filter @intelliflow/web test --run,60/120/240,2026-02-25,2026-02-25,100,PG-032:FS,
PG-039,Developer Pages,Dev Apps,DevRel (STOA-Foundation),PG-032,FILE:.specify/memory/Framework.md;FILE:audit-matrix.yml;ENV:App management;ENV:API keys;FILE:apps/web/src/app/(developer)/docs/page.tsx,"Response <200ms, Lighthouse ≥90, apps managed; artifacts: page.tsx, app-list.tsx, api-key-generator.ts",Completed,"Apps listed, keys generated, settings configured",15,ARTIFACT:apps/web/src/app/(developer)/developers/apps/page.tsx;ARTIFACT:apps/web/src/components/developer/app-list.tsx;ARTIFACT:apps/web/src/lib/developer/api-key-generator.ts;EVIDENCE:.specify/sprints/sprint-15/attestations/PG-039/attestation.json,GATE:lighthouse-gte-90;VALIDATE:pnpm --filter @intelliflow/web typecheck;VALIDATE:pnpm --filter @intelliflow/web test --run,90/180/360,2026-02-23,2026-02-23,100,PG-032:FS,
PG-040,Developer Pages,New Dev App,DevRel (STOA-Foundation),PG-039,FILE:.specify/memory/Framework.md;FILE:audit-matrix.yml;ENV:App creation form;ENV:OAuth setup;FILE:apps/web/src/app/(developer)/developers/apps/page.tsx,"Response <200ms, Lighthouse ≥90, apps created; artifacts: page.tsx, app-creator.tsx, oauth-setup.ts",Completed,"Apps created, OAuth configured, webhooks set",15,ARTIFACT:apps/web/src/app/(developer)/developers/apps/new/page.tsx;ARTIFACT:apps/web/src/components/developer/app-creator.tsx;ARTIFACT:apps/web/src/lib/developer/oauth-setup.ts;EVIDENCE:.specify/sprints/sprint-15/attestations/PG-040/attestation.json,GATE:lighthouse-gte-90;VALIDATE:pnpm --filter @intelliflow/web typecheck;VALIDATE:pnpm --filter @intelliflow/web test --run,60/120/240,2026-02-25,2026-02-27,100,PG-039:FS,
PG-041,Developer Pages,Dev App Detail,DevRel (STOA-Foundation),PG-039,FILE:.specify/memory/Framework.md;FILE:audit-matrix.yml;ENV:App dashboard;ENV:usage metrics;FILE:apps/web/src/app/(developer)/developers/apps/page.tsx,"Response <200ms, Lighthouse ≥90, metrics displayed; artifacts: page.tsx, app-dashboard.tsx, app-metrics.tsx",Completed,"App details shown, metrics displayed, logs available",15,ARTIFACT:apps/web/src/app/(developer)/developers/apps/[id]/page.tsx;ARTIFACT:apps/web/src/components/developer/app-dashboard.tsx;ARTIFACT:apps/web/src/components/developer/app-metrics.tsx;EVIDENCE:.specify/sprints/sprint-15/attestations/PG-041/attestation.json,GATE:lighthouse-gte-90;VALIDATE:pnpm --filter @intelliflow/web typecheck;VALIDATE:pnpm --filter @intelliflow/web test --run,60/120/240,2026-02-24,2026-02-24,100,PG-039:FS,
PG-042,Developer Pages,Dev App Edit,DevRel (STOA-Foundation),PG-041,FILE:.specify/memory/Framework.md;FILE:audit-matrix.yml;ENV:Settings form;ENV:webhook config;FILE:apps/web/src/app/(developer)/developers/apps/[id]/page.tsx,"Response <200ms, Lighthouse ≥90, settings updated; artifacts: page.tsx, app-editor.tsx, webhook-config.tsx",Completed,"Settings editable, webhooks configured, changes saved",15,ARTIFACT:apps/web/src/app/(developer)/developers/apps/[id]/edit/page.tsx;ARTIFACT:apps/web/src/components/developer/app-editor.tsx;ARTIFACT:apps/web/src/components/developer/webhook-config.tsx;EVIDENCE:.specify/sprints/sprint-15/attestations/PG-042/attestation.json,GATE:lighthouse-gte-90;VALIDATE:pnpm --filter @intelliflow/web typecheck;VALIDATE:pnpm --filter @intelliflow/web test --run,60/120/240,2026-02-27,2026-02-27,100,PG-041:FS,
PG-043,Support Pages,Help Center Index,Support Eng (STOA-Domain),IFC-076,FILE:.specify/memory/Framework.md;FILE:audit-matrix.yml;ENV:Help structure;POLICY:categories defined;FILE:artifacts/reports/accessibility-audit.json,"Response <200ms, Lighthouse ≥90, help searchable; artifacts: page.tsx, help-categories.tsx, help-search.tsx",Completed,"Help center live, categories organized, search working",16,ARTIFACT:apps/web/src/app/help-center/(list)/page.tsx;ARTIFACT:apps/web/src/components/support/help-categories.tsx;ARTIFACT:apps/web/src/components/support/help-search.tsx;EVIDENCE:.specify/sprints/sprint-16/attestations/PG-043/attestation.json,GATE:lighthouse-gte-90;VALIDATE:pnpm --filter @intelliflow/web typecheck;VALIDATE:pnpm --filter @intelliflow/web test --run,90/180/360,2026-02-28,2026-02-28,100,IFC-076:FS,
PG-044,Support Pages,Help Search,Support Eng (STOA-Domain),PG-043,FILE:.specify/memory/Framework.md;FILE:audit-matrix.yml;ENV:Search algorithm;ENV:relevance ranking;FILE:apps/web/src/app/help-center/(list)/page.tsx,"Response <200ms, Lighthouse ≥90, results relevant; artifacts: page.tsx, search-algorithm.tsx; uses shared SearchFilterBar (DRY)",Completed,"Search working, results relevant, filters via shared SearchFilterBar",16,ARTIFACT:apps/web/src/app/help-center/search/page.tsx;ARTIFACT:apps/web/src/components/support/search-algorithm.tsx;EVIDENCE:.specify/sprints/sprint-16/attestations/PG-044/attestation.json;SPEC:.specify/sprints/sprint-16/specifications/PG-044-spec.md;PLAN:.specify/sprints/sprint-16/planning/PG-044-plan.md,GATE:lighthouse-gte-90;VALIDATE:pnpm --filter @intelliflow/web typecheck;VALIDATE:pnpm --filter @intelliflow/web test --run,60/120/240,2026-03-07,2026-03-07,100,PG-043:FS,
PG-045,Support Pages,Help Article,Support Eng (STOA-Domain),PG-043,FILE:.specify/memory/Framework.md;FILE:audit-matrix.yml;ENV:Article template;ENV:feedback widget;FILE:apps/web/src/app/help-center/(list)/page.tsx,"Response <200ms, Lighthouse ≥90, articles displayed; artifacts: page.tsx, article-renderer.tsx, feedback-widget.tsx",Completed,"Articles rendered, feedback collected, related shown",16,ARTIFACT:apps/web/src/app/help-center/[article]/page.tsx;ARTIFACT:apps/web/src/components/support/article-renderer.tsx;ARTIFACT:apps/web/src/components/support/feedback-widget.tsx;EVIDENCE:.specify/sprints/sprint-16/attestations/PG-045/attestation.json;SPEC:.specify/sprints/sprint-16/specifications/PG-045-spec.md;PLAN:.specify/sprints/sprint-16/planning/PG-045-plan.md,GATE:lighthouse-gte-90;VALIDATE:pnpm --filter @intelliflow/web typecheck;VALIDATE:pnpm --filter @intelliflow/web test --run,60/120/240,2026-03-08,2026-03-08,100,PG-043:FS,
PG-046,Support Pages,Support Tickets,Support Eng (STOA-Domain),IFC-093,FILE:.specify/memory/Framework.md;FILE:audit-matrix.yml;ENV:Ticket list;ENV:filters;ENV:SLA display;FILE:apps/web/lib/tickets/sla-notifications.test.ts,"Response <200ms, Lighthouse ≥90, tickets listed; artifacts: page.tsx, ticket-list.tsx, sla-display.tsx",Completed,"Tickets listed, filters working, SLA shown",16,ARTIFACT:apps/web/src/app/support/tickets/(list)/page.tsx;ARTIFACT:apps/web/src/components/tickets/ticket-list.tsx;ARTIFACT:apps/web/src/components/tickets/sla-display.tsx;EVIDENCE:.specify/sprints/sprint-16/attestations/PG-046/attestation.json;SPEC:.specify/sprints/sprint-16/specifications/PG-046-spec.md;PLAN:.specify/sprints/sprint-16/planning/PG-046-plan.md,GATE:lighthouse-gte-90;VALIDATE:pnpm --filter @intelliflow/web typecheck;VALIDATE:pnpm --filter @intelliflow/web test --run,90/180/360,2026-03-02,2026-03-02,100,IFC-093:FS,
PG-047,Support Pages,New Ticket,Support Eng (STOA-Domain),PG-046,FILE:.specify/memory/Framework.md;FILE:audit-matrix.yml;ENV:Ticket form;ENV:category selection;FILE:apps/web/src/app/support/tickets/(list)/page.tsx,"Response <200ms, Lighthouse ≥90, tickets created; artifacts: page.tsx, ticket-form.tsx, file-uploader.tsx",Completed,"Tickets created, categories working, attachments uploaded",16,ARTIFACT:apps/web/src/app/support/tickets/new/page.tsx;ARTIFACT:apps/web/src/components/tickets/ticket-form.tsx;ARTIFACT:apps/web/src/components/tickets/file-uploader.tsx;EVIDENCE:.specify/sprints/sprint-16/attestations/PG-047/attestation.json;SPEC:.specify/sprints/sprint-16/specifications/PG-047-spec.md;PLAN:.specify/sprints/sprint-16/planning/PG-047-plan.md,GATE:lighthouse-gte-90;VALIDATE:pnpm --filter @intelliflow/web typecheck;VALIDATE:pnpm --filter @intelliflow/web test --run,60/120/240,2026-03-08,2026-03-08,100,PG-046:FS,
PG-048,Support Pages,Ticket Detail,Support Eng (STOA-Domain),PG-046,FILE:.specify/memory/Framework.md;FILE:audit-matrix.yml;ENV:Ticket thread;ENV:status updates;FILE:apps/web/src/app/support/tickets/(list)/page.tsx,"Response <200ms, Lighthouse ≥90, details shown; artifacts: page.tsx, ticket-thread.tsx, status-updater.tsx",Completed,"Details displayed, thread working, updates real-time; V8 coverage: Stmts 95.45% Branches 93.22% Functions 100% Lines 97.67%; 158 tests (48 new + 110 regression); STOA PASS",16,ARTIFACT:apps/web/src/app/support/tickets/[id]/page.tsx;ARTIFACT:apps/web/src/components/tickets/ticket-thread.tsx;ARTIFACT:apps/web/src/components/tickets/status-updater.tsx;EVIDENCE:.specify/sprints/sprint-16/attestations/PG-048/attestation.json;SPEC:.specify/sprints/sprint-16/specifications/PG-048-spec.md;PLAN:.specify/sprints/sprint-16/planning/PG-048-plan.md;ATTESTATION:.specify/sprints/sprint-16/attestations/PG-048/attestation.json,GATE:lighthouse-gte-90;VALIDATE:pnpm --filter @intelliflow/web typecheck;VALIDATE:pnpm --filter @intelliflow/web test --run,60/120/240,2026-03-08,2026-03-08,100,PG-046:FS,
PG-049,Support Pages,Support Chat,Support Eng (STOA-Domain),IFC-036,FILE:.specify/memory/Framework.md;FILE:audit-matrix.yml;ENV:Chat widget;ENV:agent routing;FILE:artifacts/misc/webhook-test-results.json,"Response <200ms, Lighthouse ≥90, chat functional; artifacts: page.tsx, chat-widget.tsx, agent-router.ts",Backlog,"Chat working, agents connected, messages flowing",22,ARTIFACT:apps/web/src/app/support/chat/page.tsx;ARTIFACT:apps/web/src/components/support/chat-widget.tsx;ARTIFACT:apps/web/src/lib/support/agent-router.ts;EVIDENCE:.specify/sprints/sprint-22/attestations/PG-049/context_ack.json,GATE:lighthouse-gte-90;VALIDATE:pnpm --filter @intelliflow/web typecheck;VALIDATE:pnpm --filter @intelliflow/web test --run,120/240/480,2026-10-18,2026-10-24,0,IFC-036:FS,
PG-050,Legal Pages,Privacy Policy,Legal Counsel (STOA-Foundation),IFC-058,FILE:.specify/memory/Framework.md;FILE:audit-matrix.yml;POLICY:Privacy content approved;ENV:versioning ready;FILE:docs/shared/review-checklist.md;FILE:docs/operations/pr-checklist.md;FILE:docs/compliance-and-governance/compliance/gdpr-compliance-checklist.csv,"Response <200ms, Lighthouse ≥90, policy displayed; artifacts: page.tsx, privacy-content.md, consent-tracker.ts",Completed,"Policy published, versions tracked, consent logged",17,ARTIFACT:apps/web/src/app/(public)/privacy/page.tsx;ARTIFACT:docs/shared/privacy-content.md;ARTIFACT:apps/web/src/lib/legal/consent-tracker.ts;EVIDENCE:.specify/sprints/sprint-17/attestations/PG-050/attestation.json,GATE:lighthouse-gte-90;VALIDATE:pnpm --filter @intelliflow/web typecheck;VALIDATE:pnpm --filter @intelliflow/web test --run,60/120/240,2026-08-09,2026-08-11,100,IFC-058:FS,
PG-051,Legal Pages,Terms of Service,Legal Counsel (STOA-Foundation),PG-050,FILE:.specify/memory/Framework.md;FILE:audit-matrix.yml;POLICY:Terms approved;ENV:acceptance tracking;FILE:docs/architecture/hex-boundaries.md;FILE:apps/web/src/app/(public)/privacy/page.tsx,"Response <200ms, Lighthouse ≥90, terms displayed; artifacts: page.tsx, terms-content.md, acceptance-tracker.ts",Completed,"Terms published, acceptance tracked, updates notified",17,ARTIFACT:apps/web/src/app/(public)/terms/page.tsx;ARTIFACT:docs/shared/terms-content.md;ARTIFACT:apps/web/src/lib/legal/acceptance-tracker.ts;EVIDENCE:.specify/sprints/sprint-17/attestations/PG-051/attestation.json,GATE:lighthouse-gte-90;VALIDATE:pnpm --filter @intelliflow/web typecheck;VALIDATE:pnpm --filter @intelliflow/web test --run,60/120/240,2026-04-12,2026-08-13,100,PG-050:FS,
PG-052,Legal Pages,Cookie Policy,Legal Counsel (STOA-Foundation),PG-050,FILE:.specify/memory/Framework.md;FILE:audit-matrix.yml;ENV:Cookie policy written;ENV:banner ready;FILE:apps/web/src/app/(public)/privacy/page.tsx,"Response <200ms, Lighthouse ≥90, policy shown; artifacts: page.tsx, cookie-content.md, cookie-banner.tsx",Completed,"Policy displayed, banner working, preferences saved",17,ARTIFACT:apps/web/src/app/(public)/cookies/page.tsx;ARTIFACT:docs/shared/cookie-content.md;EVIDENCE:.specify/sprints/sprint-17/attestations/PG-052/attestation.json,GATE:lighthouse-gte-90;VALIDATE:pnpm --filter @intelliflow/web typecheck;VALIDATE:pnpm --filter @intelliflow/web test --run,60/120/240,2026-08-12,2026-08-14,100,PG-050:FS,
PG-053,Legal Pages,Data Processing Addendum,Legal Counsel (STOA-Foundation),"PG-050,PG-051",FILE:.specify/memory/Framework.md;FILE:audit-matrix.yml;ENV:DPA template;ENV:signature process;FILE:docs/architecture/adr/ADR-007-data-governance.md;FILE:docs/shared/review-checklist.md;FILE:docs/operations/pr-checklist.md;FILE:apps/web/src/app/(public)/privacy/page.tsx;FILE:apps/web/src/lib/legal/legal-content-parser.ts,"Response <200ms, Lighthouse ≥90, DPA available; artifacts: page.tsx, dpa-template.pdf, signature-handler.ts",Completed,"DPA downloadable, signatures working, records kept",17,ARTIFACT:apps/web/src/app/(public)/dpa/page.tsx;ARTIFACT:docs/compliance-and-governance/compliance/dpa-template.pdf;ARTIFACT:apps/web/src/lib/legal/signature-handler.ts;EVIDENCE:.specify/sprints/sprint-17/attestations/PG-053/attestation.json,GATE:lighthouse-gte-90;VALIDATE:pnpm --filter @intelliflow/web typecheck;VALIDATE:pnpm --filter @intelliflow/web test --run,90/180/360,2026-04-13,2026-04-13,100,"PG-050:FS,PG-051:FS",
PG-054,Legal Pages,Acceptable Use Policy,Legal Counsel (STOA-Foundation),PG-050,FILE:.specify/memory/Framework.md;FILE:audit-matrix.yml;ENV:AUP content;ENV:violation process;FILE:apps/web/src/app/(public)/privacy/page.tsx,"Response <200ms, Lighthouse ≥90, AUP displayed; artifacts: page.tsx, aup-content.md, violation-tracker.ts",Completed,"AUP published, violations tracked, enforcement ready",17,ARTIFACT:apps/web/src/app/(public)/aup/page.tsx;ARTIFACT:docs/shared/aup-content.md;ARTIFACT:apps/web/src/lib/legal/violation-tracker.ts;EVIDENCE:.specify/sprints/sprint-17/attestations/PG-054/attestation.json,GATE:lighthouse-gte-90;VALIDATE:pnpm --filter @intelliflow/web typecheck;VALIDATE:pnpm --filter @intelliflow/web test --run,60/120/240,2026-08-15,2026-08-17,100,PG-050:FS,
PG-055,System Pages,404 Not Found,SRE (STOA-Foundation),IFC-076,FILE:.specify/memory/Framework.md;FILE:audit-matrix.yml;ENV:404 design;ENV:search suggestions;FILE:artifacts/reports/accessibility-audit.json,"Response <200ms, Lighthouse ≥90, suggestions shown; artifacts: page.tsx, search-suggestions.tsx, error-analytics.ts",Completed,"404 page working, search suggested, home linked",17,ARTIFACT:apps/web/src/app/404/page.tsx;ARTIFACT:apps/web/src/components/status/search-suggestions.tsx;ARTIFACT:apps/web/src/lib/status/error-analytics.ts;EVIDENCE:.specify/sprints/sprint-17/attestations/PG-055/attestation.json,GATE:lighthouse-gte-90;VALIDATE:pnpm --filter @intelliflow/web typecheck;VALIDATE:pnpm --filter @intelliflow/web test --run,60/120/240,2026-08-16,2026-08-18,100,IFC-076:FS,
PG-056,System Pages,500 Error,SRE (STOA-Foundation),PG-055,FILE:.specify/memory/Framework.md;FILE:audit-matrix.yml;ENV:Error page;ENV:incident creation;FILE:apps/web/src/app/404/page.tsx,"Response <200ms, Lighthouse ≥90, errors logged; artifacts: page.tsx, incident-creator.ts, error-notifier.ts",Completed,"Error page shown, incidents created, team notified",17,ARTIFACT:apps/web/src/app/500/page.tsx;ARTIFACT:apps/web/src/lib/status/incident-creator.ts;ARTIFACT:apps/web/src/lib/status/error-notifier.ts;EVIDENCE:.specify/sprints/sprint-17/attestations/PG-056/attestation.json;SPEC:.specify/sprints/sprint-17/specifications/PG-056-spec.md;PLAN:.specify/sprints/sprint-17/planning/PG-056-plan.md,GATE:lighthouse-gte-90;VALIDATE:pnpm --filter @intelliflow/web typecheck;VALIDATE:pnpm --filter @intelliflow/web test --run,60/120/240,2026-08-17,2026-08-19,100,PG-055:FS,
PG-057,System Pages,Maintenance,SRE (STOA-Foundation),PG-055,FILE:.specify/memory/Framework.md;FILE:audit-matrix.yml;ENV:Maintenance mode;ENV:status updates;FILE:apps/web/src/app/404/page.tsx,"Response <200ms, Lighthouse ≥90, status shown; artifacts: page.tsx, maintenance-mode.ts, status-updater.ts",Completed,"Maintenance page active, updates displayed, ETA shown",17,ARTIFACT:apps/web/src/app/maintenance/page.tsx;ARTIFACT:apps/web/src/lib/status/maintenance-mode.ts;ARTIFACT:apps/web/src/lib/status/status-updater.ts;EVIDENCE:.specify/sprints/sprint-17/attestations/PG-057/attestation.json;SPEC:.specify/sprints/sprint-17/specifications/PG-057-spec.md;PLAN:.specify/sprints/sprint-17/planning/PG-057-plan.md,GATE:lighthouse-gte-90;VALIDATE:pnpm --filter @intelliflow/web typecheck;VALIDATE:pnpm --filter @intelliflow/web test --run,60/120/240,2026-04-13,2026-04-14,100,PG-055:FS,
PG-058,Core CRM,Dashboard,CRM FE+BE (STOA-Foundation),"IFC-089,IFC-091,IFC-095",IMPLEMENTS:FLOW-002;FILE:.specify/memory/Framework.md;FILE:audit-matrix.yml;POLICY:KPIs defined;ENV:widgets designed;FILE:apps/api/src/modules/contact/contact.router.ts;FILE:apps/api/src/modules/opportunity/opportunity.router.ts;FILE:tools/scripts/model-evaluation.ipynb,"Response <200ms, Lighthouse ≥90, real-time data; artifacts: page.tsx, kpi-calculator.ts, context_ack.json",Completed,"Dashboard live, KPIs displayed, updates real-time",18,ARTIFACT:apps/web/src/app/dashboard/page.tsx;ARTIFACT:apps/web/src/lib/dashboard/kpi-calculator.ts;EVIDENCE:.specify/sprints/sprint-18/attestations/PG-058/context_ack.json,GATE:lighthouse-gte-90;VALIDATE:pnpm --filter @intelliflow/web typecheck;VALIDATE:pnpm --filter @intelliflow/web test --run,120/240/480,2026-08-23,2026-08-29,0,"IFC-089:FS,IFC-091:FS,IFC-095:FS",
PG-059,Core CRM,Leads List,CRM FE+BE (STOA-Foundation),IFC-089,IMPLEMENTS:FLOW-003;FILE:.specify/memory/Framework.md;FILE:audit-matrix.yml;ENV:List view;ENV:filters;ENV:bulk actions;FILE:apps/api/src/modules/contact/contact.router.ts,"Response <200ms, Lighthouse ≥90, pagination working; artifacts: page.tsx, lead-list.tsx, bulk-actions.ts",Completed,"Leads listed, filters working, actions functional",18,ARTIFACT:apps/web/src/app/leads/(list)/page.tsx;ARTIFACT:apps/web/src/components/leads/lead-list.tsx;ARTIFACT:apps/web/src/lib/leads/bulk-actions.ts;ARTIFACT:apps/web/src/lib/leads/lead-types.ts;EVIDENCE:.specify/sprints/sprint-18/attestations/PG-059/attestation.json,GATE:lighthouse-gte-90;VALIDATE:pnpm --filter @intelliflow/web typecheck;VALIDATE:pnpm --filter @intelliflow/web test --run,90/180/360,2026-04-19,2026-04-19,100,IFC-089:FS,
PG-060,Core CRM,New Lead,CRM FE+BE (STOA-Foundation),PG-059,FILE:.specify/memory/Framework.md;FILE:audit-matrix.yml;ENV:Lead form;ENV:validation;ENV:enrichment;FILE:apps/web/src/app/leads/(list)/new/page.tsx,"Response <200ms, Lighthouse ≥90, leads created; artifacts: page.tsx, lead-enrichment.ts",Completed,"Leads created, enrichment working, assignment automated",18,ARTIFACT:apps/web/src/app/leads/(list)/new/page.tsx;ARTIFACT:apps/web/src/lib/leads/lead-enrichment.ts;EVIDENCE:.specify/sprints/sprint-18/attestations/PG-060/context_ack.json,GATE:lighthouse-gte-90;VALIDATE:pnpm --filter @intelliflow/web typecheck;VALIDATE:pnpm --filter @intelliflow/web test --run,60/120/240,2026-08-27,2026-08-31,100,PG-059:FS,
PG-061,Core CRM,Lead Detail,CRM FE+BE (STOA-Foundation),PG-059,FILE:.specify/memory/Framework.md;FILE:audit-matrix.yml;ENV:Lead 360 view;ENV:timeline;ENV:actions;FILE:apps/web/src/app/(crm)/leads/page.tsx,"Response <200ms, Lighthouse ≥90, details complete; artifacts: page.tsx, lead-detail.tsx, lead-timeline.tsx",Completed,"Details shown, timeline displayed, actions available",18,ARTIFACT:apps/web/src/app/leads/[id]/page.tsx;ARTIFACT:apps/web/src/components/leads/lead-detail.tsx;ARTIFACT:apps/web/src/components/leads/lead-timeline.tsx;EVIDENCE:.specify/sprints/sprint-18/attestations/PG-061/context_ack.json,GATE:lighthouse-gte-90;VALIDATE:pnpm --filter @intelliflow/web typecheck;VALIDATE:pnpm --filter @intelliflow/web test --run,90/180/360,2026-08-28,2026-09-03,0,PG-059:FS,
PG-062,Core CRM,Edit Lead,CRM FE+BE (STOA-Foundation),PG-061,FILE:.specify/memory/Framework.md;FILE:audit-matrix.yml;ENV:Edit form;ENV:change tracking;FILE:apps/web/src/app/(crm)/leads/[id]/page.tsx,"Response <200ms, Lighthouse ≥90, updates saved; artifacts: page.tsx, lead-editor.tsx, change-tracker.ts",Completed,"Edits working, changes tracked, history maintained",18,ARTIFACT:apps/web/src/app/leads/[id]/edit/page.tsx;ARTIFACT:apps/web/src/components/leads/lead-editor.tsx;ARTIFACT:apps/web/src/lib/leads/change-tracker.ts;EVIDENCE:.specify/sprints/sprint-18/attestations/PG-062/context_ack.json,GATE:lighthouse-gte-90;VALIDATE:pnpm --filter @intelliflow/web typecheck;VALIDATE:pnpm --filter @intelliflow/web test --run,60/120/240,2026-08-30,2026-09-01,0,PG-061:FS,
PG-063,Core CRM,Import Leads,CRM FE+BE (STOA-Foundation),PG-059,FILE:.specify/memory/Framework.md;FILE:audit-matrix.yml;ENV:CSV import;ENV:mapping;ENV:validation;FILE:apps/web/src/app/(crm)/leads/page.tsx,"Response <200ms, Lighthouse ≥90, imports processed; artifacts: page.tsx, csv-importer.tsx, field-mapper.ts",Completed,"Imports working, mapping functional, validation active",18,ARTIFACT:apps/web/src/app/leads/(list)/import/page.tsx;ARTIFACT:apps/web/src/components/leads/csv-importer.tsx;ARTIFACT:apps/web/src/lib/leads/field-mapper.ts;EVIDENCE:.specify/sprints/sprint-18/attestations/PG-063/context_ack.json,GATE:lighthouse-gte-90;VALIDATE:pnpm --filter @intelliflow/web typecheck;VALIDATE:pnpm --filter @intelliflow/web test --run,90/180/360,2026-09-01,2026-09-05,0,PG-059:FS,
PG-064,Core CRM,Contacts List,CRM FE+BE (STOA-Foundation),IFC-089,FILE:.specify/memory/Framework.md;FILE:audit-matrix.yml;ENV:Contact list;ENV:search;ENV:segments;FILE:apps/api/src/modules/contact/contact.router.ts;FILE:docs/design/sitemap.md;FILE:docs/design/ui-flow-mapping.md;FILE:docs/design/page-registry.md;FILE:apps/project-tracker/docs/metrics/_global/flows/flow-index.md,"Response <200ms, Lighthouse ≥90, search fast; artifacts: page.tsx, contact-list.tsx, contact-search.ts",Completed,"Contacts listed, search working, segments functional",19,ARTIFACT:apps/web/src/app/contacts/(list)/page.tsx;ARTIFACT:apps/web/src/components/contacts/ContactList.tsx;ARTIFACT:apps/web/src/lib/contacts/contact-search.ts;EVIDENCE:.specify/sprints/sprint-19/attestations/PG-064/context_ack.json,GATE:lighthouse-gte-90;VALIDATE:pnpm --filter @intelliflow/web typecheck;VALIDATE:pnpm --filter @intelliflow/web test --run,90/180/360,2026-09-06,2026-09-12,0,IFC-089:FS,
PG-065,Core CRM,Contact 360,CRM FE+BE (STOA-Foundation),IFC-090,FILE:.specify/memory/Framework.md;FILE:audit-matrix.yml;POLICY:Complete view;ENV:all related data;FILE:artifacts/lighthouse/lighthouse-360-report.html;FILE:docs/design/sitemap.md;FILE:docs/design/ui-flow-mapping.md;FILE:docs/design/page-registry.md;FILE:apps/project-tracker/docs/metrics/_global/flows/flow-index.md,"Response <200ms, Lighthouse ≥90, data complete; artifacts: page.tsx, contact-360.tsx, contact-insights.tsx",Completed,"360 view complete, all data shown, insights displayed",19,ARTIFACT:apps/web/src/app/contacts/[id]/page.tsx;ARTIFACT:apps/web/src/components/contacts/contact-360.tsx;ARTIFACT:apps/web/src/components/contacts/contact-insights.tsx;EVIDENCE:.specify/sprints/sprint-19/attestations/PG-065/context_ack.json,GATE:lighthouse-gte-90;VALIDATE:pnpm --filter @intelliflow/web typecheck;VALIDATE:pnpm --filter @intelliflow/web test --run,120/240/480,2026-09-08,2026-09-14,100,IFC-090:FS,
PG-066,Core CRM,Edit Contact,CRM FE+BE (STOA-Foundation),PG-065,FILE:.specify/memory/Framework.md;FILE:audit-matrix.yml;ENV:Contact editor;ENV:merge detection;FILE:apps/web/src/app/(crm)/contacts/[id]/page.tsx;FILE:docs/design/sitemap.md;FILE:docs/design/ui-flow-mapping.md;FILE:docs/design/page-registry.md;FILE:apps/project-tracker/docs/metrics/_global/flows/flow-index.md,"Response <200ms, Lighthouse ≥90, edits saved; artifacts: page.tsx, contact-editor.tsx, duplicate-detector.ts",Backlog,"Edits working, duplicates detected, merge suggested",20,ARTIFACT:apps/web/src/app/contacts/[id]/edit/page.tsx;ARTIFACT:apps/web/src/components/contacts/contact-editor.tsx;ARTIFACT:apps/web/src/lib/contacts/duplicate-detector.ts;EVIDENCE:.specify/sprints/sprint-19/attestations/PG-066/context_ack.json,GATE:lighthouse-gte-90;VALIDATE:pnpm --filter @intelliflow/web typecheck;VALIDATE:pnpm --filter @intelliflow/web test --run,60/120/240,2026-09-10,2026-09-12,0,PG-065:FS,
PG-067,Core CRM,Import Contacts,CRM FE+BE (STOA-Foundation),PG-064,FILE:.specify/memory/Framework.md;FILE:audit-matrix.yml;ENV:Batch import;ENV:deduplication;FILE:apps/web/src/app/(crm)/contacts/page.tsx;FILE:docs/design/sitemap.md;FILE:docs/design/ui-flow-mapping.md;FILE:docs/design/page-registry.md;FILE:apps/project-tracker/docs/metrics/_global/flows/flow-index.md,"Response <200ms, Lighthouse ≥90, imports clean; artifacts: page.tsx, contact-importer.tsx, deduplicator.ts",Backlog,"Imports working, duplicates handled, data clean",20,ARTIFACT:apps/web/src/app/contacts/(list)/import/page.tsx;ARTIFACT:apps/web/src/components/contacts/contact-importer.tsx;ARTIFACT:apps/web/src/lib/contacts/deduplicator.ts;EVIDENCE:.specify/sprints/sprint-19/attestations/PG-067/context_ack.json,GATE:lighthouse-gte-90;VALIDATE:pnpm --filter @intelliflow/web typecheck;VALIDATE:pnpm --filter @intelliflow/web test --run,90/180/360,2026-09-11,2026-09-15,0,PG-064:FS,
PG-068,Core CRM,Merge Contacts,CRM FE+BE (STOA-Foundation),PG-064,FILE:.specify/memory/Framework.md;FILE:audit-matrix.yml;ENV:Merge UI;ENV:conflict resolution;FILE:docs/operations/pr-checklist.md;FILE:apps/web/src/app/(crm)/contacts/page.tsx;FILE:docs/design/sitemap.md;FILE:docs/design/ui-flow-mapping.md;FILE:docs/design/page-registry.md;FILE:apps/project-tracker/docs/metrics/_global/flows/flow-index.md,"Response <200ms, Lighthouse ≥90, merges completed; artifacts: page.tsx, merge-wizard.tsx, conflict-resolver.ts",Backlog,"Merges working, conflicts resolved, history preserved",20,ARTIFACT:apps/web/src/app/contacts/(list)/merge/page.tsx;ARTIFACT:apps/web/src/components/contacts/merge-wizard.tsx;ARTIFACT:apps/web/src/lib/contacts/conflict-resolver.ts;EVIDENCE:.specify/sprints/sprint-19/attestations/PG-068/context_ack.json,GATE:lighthouse-gte-90;VALIDATE:pnpm --filter @intelliflow/web typecheck;VALIDATE:pnpm --filter @intelliflow/web test --run,90/180/360,2026-09-13,2026-09-17,0,PG-064:FS,
PG-069,Core CRM,Accounts List,CRM FE+BE (STOA-Foundation),IFC-089,FILE:.specify/memory/Framework.md;FILE:audit-matrix.yml;ENV:Account hierarchy;ENV:relationships;FILE:apps/api/src/modules/contact/contact.router.ts;FILE:docs/design/sitemap.md;FILE:docs/design/ui-flow-mapping.md;FILE:docs/design/page-registry.md;FILE:apps/project-tracker/docs/metrics/_global/flows/flow-index.md,"Response <200ms, Lighthouse ≥90, hierarchy shown; artifacts: page.tsx, account-list.tsx, hierarchy-view.tsx",Completed,"Accounts listed, hierarchy displayed, relationships linked",19,ARTIFACT:apps/web/src/app/accounts/(list)/page.tsx;ARTIFACT:apps/web/src/app/accounts/(list)/AccountsPageClient.tsx;ARTIFACT:apps/web/src/components/accounts/AccountHierarchy.tsx;EVIDENCE:.specify/sprints/sprint-19/attestations/PG-069/context_ack.json,GATE:lighthouse-gte-90;VALIDATE:pnpm --filter @intelliflow/web typecheck;VALIDATE:pnpm --filter @intelliflow/web test --run,90/180/360,2026-09-14,2026-09-18,100,IFC-089:FS,
PG-070,Core CRM,Account Detail,CRM FE+BE (STOA-Foundation),PG-069,FILE:.specify/memory/Framework.md;FILE:audit-matrix.yml;ENV:Account 360;ENV:subsidiaries;ENV:contacts;FILE:apps/web/src/app/(crm)/accounts/page.tsx;FILE:docs/design/sitemap.md;FILE:docs/design/ui-flow-mapping.md;FILE:docs/design/page-registry.md;FILE:apps/project-tracker/docs/metrics/_global/flows/flow-index.md,"Response <200ms, Lighthouse ≥90, complete view; artifacts: page.tsx, account-detail.tsx, subsidiary-list.tsx",Backlog,"Details complete, subsidiaries shown, contacts linked",20,ARTIFACT:apps/web/src/app/accounts/[id]/page.tsx;ARTIFACT:apps/web/src/components/accounts/account-detail.tsx;ARTIFACT:apps/web/src/components/accounts/subsidiary-list.tsx;EVIDENCE:.specify/sprints/sprint-20/attestations/PG-070/context_ack.json,GATE:lighthouse-gte-90;VALIDATE:pnpm --filter @intelliflow/web typecheck;VALIDATE:pnpm --filter @intelliflow/web test --run,90/180/360,2026-09-20,2026-09-26,0,PG-069:FS,
PG-071,Core CRM,Edit Account,CRM FE+BE (STOA-Foundation),PG-070,FILE:.specify/memory/Framework.md;FILE:audit-matrix.yml;ENV:Account editor;ENV:parent selection;FILE:apps/web/src/app/(crm)/accounts/[id]/page.tsx;FILE:docs/design/sitemap.md;FILE:docs/design/ui-flow-mapping.md;FILE:docs/design/page-registry.md;FILE:apps/project-tracker/docs/metrics/_global/flows/flow-index.md,"Response <200ms, Lighthouse ≥90, updates saved; artifacts: page.tsx, account-editor.tsx, parent-selector.tsx",Backlog,"Edits working, hierarchy updated, changes tracked",20,ARTIFACT:apps/web/src/app/accounts/[id]/edit/page.tsx;ARTIFACT:apps/web/src/components/accounts/account-editor.tsx;ARTIFACT:apps/web/src/components/accounts/parent-selector.tsx;EVIDENCE:.specify/sprints/sprint-20/attestations/PG-071/context_ack.json,GATE:lighthouse-gte-90;VALIDATE:pnpm --filter @intelliflow/web typecheck;VALIDATE:pnpm --filter @intelliflow/web test --run,60/120/240,2026-09-22,2026-09-24,0,PG-070:FS,
PG-072,Core CRM,Import Accounts,CRM FE+BE (STOA-Foundation),PG-069,FILE:.specify/memory/Framework.md;FILE:audit-matrix.yml;ENV:Account import;ENV:hierarchy mapping;FILE:apps/web/src/app/(crm)/accounts/page.tsx;FILE:docs/design/sitemap.md;FILE:docs/design/ui-flow-mapping.md;FILE:docs/design/page-registry.md;FILE:apps/project-tracker/docs/metrics/_global/flows/flow-index.md,"Response <200ms, Lighthouse ≥90, imports structured; artifacts: page.tsx, account-importer.tsx, hierarchy-mapper.ts",Backlog,"Imports working, hierarchy preserved, relationships mapped",20,ARTIFACT:apps/web/src/app/accounts/(list)/import/page.tsx;ARTIFACT:apps/web/src/components/accounts/account-importer.tsx;ARTIFACT:apps/web/src/lib/accounts/hierarchy-mapper.ts;EVIDENCE:.specify/sprints/sprint-20/attestations/PG-072/context_ack.json,GATE:lighthouse-gte-90;VALIDATE:pnpm --filter @intelliflow/web typecheck;VALIDATE:pnpm --filter @intelliflow/web test --run,90/180/360,2026-09-24,2026-09-30,0,PG-069:FS,
PG-073,Core CRM,Opportunities List,CRM FE+BE (STOA-Foundation),IFC-091,FILE:.specify/memory/Framework.md;FILE:audit-matrix.yml;ENV:Opportunity pipeline;ENV:stages;FILE:apps/api/src/modules/opportunity/opportunity.router.ts;FILE:docs/design/sitemap.md;FILE:docs/design/ui-flow-mapping.md;FILE:docs/design/page-registry.md;FILE:apps/project-tracker/docs/metrics/_global/flows/flow-index.md,"Response <200ms, Lighthouse ≥90, pipeline visible; artifacts: page.tsx, opportunity-list.tsx, pipeline-view.tsx",Backlog,"Opportunities listed, pipeline shown, stages clear",20,ARTIFACT:apps/web/src/app/deals/(list)/page.tsx;ARTIFACT:apps/web/src/components/deals/opportunity-list.tsx;ARTIFACT:apps/web/src/components/deals/pipeline-view.tsx;EVIDENCE:.specify/sprints/sprint-20/attestations/PG-073/context_ack.json,GATE:lighthouse-gte-90;VALIDATE:pnpm --filter @intelliflow/web typecheck;VALIDATE:pnpm --filter @intelliflow/web test --run,90/180/360,2026-09-26,2026-10-02,0,IFC-091:FS,
PG-074,Core CRM,Opportunity Detail CRITICAL: Current page is fully hardcoded with SAMPLE_DEAL and SAMPLE_ACTIVITIES constants - zero API calls. Must: (1) Replace with api.opportunity.getById query (IFC-186 router already built with moveStage getHistory getProducts getPipeline endpoints). (2) Wire all 6 action buttons: Won/Lost to updateStage mutations with stage dialog Edit to navigate to edit form Clone to duplicate mutation Archive to set archived Delete to AlertDialog + delete mutation. (3) Add real activity timeline via ActivityFeed component (IFC-069). (4) Wire file section to real data. (5) Remove hardcoded SAMPLE_* constants. Cross-entity patterns from Lead 360 wiring (2026-03-04) should be followed.,CRM FE+BE (STOA-Foundation),PG-073,FILE:.specify/memory/Framework.md;FILE:audit-matrix.yml;ENV:Deal details;ENV:products;ENV:timeline;FILE:apps/web/src/app/(crm)/opportunities/page.tsx;FILE:docs/design/sitemap.md;FILE:docs/design/ui-flow-mapping.md;FILE:docs/design/page-registry.md;FILE:apps/project-tracker/docs/metrics/_global/flows/flow-index.md,"Response <200ms, Lighthouse ≥90, details complete; artifacts: page.tsx, opportunity-detail.tsx, product-list.tsx; Deal detail loads real API data; all 6 action buttons functional with confirmation dialogs; activity timeline shows real events; file section wired; no hardcoded SAMPLE_* constants remain; Lighthouse >=90; tests >=90%",Backlog,"Details shown, products listed, timeline displayed",20,ARTIFACT:apps/web/src/app/deals/[id]/page.tsx;ARTIFACT:apps/web/src/components/deals/opportunity-detail.tsx;ARTIFACT:apps/web/src/components/deals/product-list.tsx;EVIDENCE:.specify/sprints/sprint-20/attestations/PG-074/context_ack.json,GATE:lighthouse-gte-90;VALIDATE:pnpm --filter @intelliflow/web typecheck;VALIDATE:pnpm --filter @intelliflow/web test --run,90/180/360,2026-09-28,2026-10-04,0,PG-073:FS,
PG-075,Core CRM,Edit Opportunity,CRM FE+BE (STOA-Foundation),PG-074,FILE:.specify/memory/Framework.md;FILE:audit-matrix.yml;ENV:Deal editor;ENV:probability calc;FILE:apps/web/src/app/(crm)/opportunities/[id]/page.tsx;FILE:docs/design/sitemap.md;FILE:docs/design/ui-flow-mapping.md;FILE:docs/design/page-registry.md;FILE:apps/project-tracker/docs/metrics/_global/flows/flow-index.md,"Response <200ms, Lighthouse ≥90, calculations accurate; artifacts: page.tsx, opportunity-editor.tsx, probability-calc.ts",Backlog,"Edits working, probability calculated, forecast updated",20,ARTIFACT:apps/web/src/app/deals/[id]/edit/page.tsx;ARTIFACT:apps/web/src/components/deals/opportunity-editor.tsx;ARTIFACT:apps/web/src/lib/deals/probability-calc.ts;EVIDENCE:.specify/sprints/sprint-20/attestations/PG-075/context_ack.json,GATE:lighthouse-gte-90;VALIDATE:pnpm --filter @intelliflow/web typecheck;VALIDATE:pnpm --filter @intelliflow/web test --run,60/120/240,2026-09-30,2026-10-02,0,PG-074:FS,
PG-076,Core CRM,Pipeline Board,CRM FE+BE (STOA-Foundation),IFC-091,FILE:.specify/memory/Framework.md;FILE:audit-matrix.yml;ENV:Kanban view;ENV:drag-drop;ENV:filters;FILE:docs/operations/quality-gates.md;FILE:apps/api/src/modules/opportunity/opportunity.router.ts;FILE:docs/design/sitemap.md;FILE:docs/design/ui-flow-mapping.md;FILE:docs/design/page-registry.md;FILE:apps/project-tracker/docs/metrics/_global/flows/flow-index.md,"Response <200ms, Lighthouse ≥90, drag smooth; artifacts: page.tsx, pipeline-board.tsx, drag-drop-handler.ts",Backlog,"Board working, drag-drop smooth, filters functional",21,ARTIFACT:apps/web/src/app/pipeline/page.tsx;ARTIFACT:apps/web/src/components/pipeline/pipeline-board.tsx;ARTIFACT:apps/web/src/lib/pipeline/drag-drop-handler.ts;EVIDENCE:.specify/sprints/sprint-21/attestations/PG-076/context_ack.json,GATE:lighthouse-gte-90;VALIDATE:pnpm --filter @intelliflow/web typecheck;VALIDATE:pnpm --filter @intelliflow/web test --run,120/240/480,2026-10-04,2026-10-10,0,IFC-091:FS,
PG-077,Core CRM,Pipeline Stages,CRM FE+BE (STOA-Foundation),PG-076,FILE:.specify/memory/Framework.md;FILE:audit-matrix.yml;ENV:Stage config;ENV:conversion rates;FILE:docs/operations/quality-gates.md;FILE:apps/web/src/app/(crm)/pipeline/page.tsx;FILE:docs/design/sitemap.md;FILE:docs/design/ui-flow-mapping.md;FILE:docs/design/page-registry.md;FILE:apps/project-tracker/docs/metrics/_global/flows/flow-index.md,"Response <200ms, Lighthouse ≥90, rates calculated; artifacts: page.tsx, stage-config.tsx, conversion-calculator.ts",Backlog,"Stages configured, rates calculated, insights shown",21,ARTIFACT:apps/web/src/app/pipeline/stages/page.tsx;ARTIFACT:apps/web/src/components/pipeline/stage-config.tsx;ARTIFACT:apps/web/src/lib/pipeline/conversion-calculator.ts;EVIDENCE:.specify/sprints/sprint-21/attestations/PG-077/context_ack.json,GATE:lighthouse-gte-90;VALIDATE:pnpm --filter @intelliflow/web typecheck;VALIDATE:pnpm --filter @intelliflow/web test --run,60/120/240,2026-10-06,2026-10-08,0,PG-076:FS,
PG-078,Core CRM,Stage Detail,CRM FE+BE (STOA-Foundation),PG-077,FILE:.specify/memory/Framework.md;FILE:audit-matrix.yml;ENV:Stage analytics;ENV:bottlenecks;FILE:apps/web/src/app/(crm)/pipeline/stages/page.tsx;FILE:docs/design/sitemap.md;FILE:docs/design/ui-flow-mapping.md;FILE:docs/design/page-registry.md;FILE:apps/project-tracker/docs/metrics/_global/flows/flow-index.md,"Response <200ms, Lighthouse ≥90, analytics shown; artifacts: page.tsx, stage-analytics.tsx, bottleneck-analyzer.ts",Backlog,"Analytics displayed, bottlenecks identified, actions suggested",21,ARTIFACT:apps/web/src/app/pipeline/stages/[id]/page.tsx;ARTIFACT:apps/web/src/components/deals/stage-analytics.tsx;ARTIFACT:apps/web/src/lib/deals/bottleneck-analyzer.ts;EVIDENCE:.specify/sprints/sprint-21/attestations/PG-078/context_ack.json,GATE:lighthouse-gte-90;VALIDATE:pnpm --filter @intelliflow/web typecheck;VALIDATE:pnpm --filter @intelliflow/web test --run,60/120/240,2026-10-08,2026-10-10,0,PG-077:FS,
PG-079,Core CRM,Forecasts,CRM FE+BE (STOA-Foundation),IFC-092,FILE:.specify/memory/Framework.md;FILE:audit-matrix.yml;ENV:Forecast models;ENV:accuracy tracking;FILE:apps/api/src/shared/forecast-algorithm.test.ts;FILE:docs/design/sitemap.md;FILE:docs/design/ui-flow-mapping.md;FILE:docs/design/page-registry.md;FILE:apps/project-tracker/docs/metrics/_global/flows/flow-index.md,"Response <200ms, Lighthouse ≥90, forecasts accurate; artifacts: page.tsx, forecast-display.tsx, accuracy-tracker.ts",Backlog,"Forecasts generated, accuracy tracked, adjustments enabled",21,ARTIFACT:apps/web/src/app/forecasts/page.tsx;ARTIFACT:apps/web/src/components/deals/forecast-display.tsx;ARTIFACT:apps/web/src/lib/deals/accuracy-tracker.ts;EVIDENCE:.specify/sprints/sprint-21/attestations/PG-079/context_ack.json,GATE:lighthouse-gte-90;VALIDATE:pnpm --filter @intelliflow/web typecheck;VALIDATE:pnpm --filter @intelliflow/web test --run,90/180/360,2026-10-10,2026-10-16,0,IFC-092:FS,
PG-080,Core CRM,Activities,CRM FE+BE (STOA-Foundation),IFC-089,FILE:.specify/memory/Framework.md;FILE:audit-matrix.yml;ENV:Activity timeline;ENV:filters;FILE:apps/api/src/modules/contact/contact.router.ts;FILE:docs/design/sitemap.md;FILE:docs/design/ui-flow-mapping.md;FILE:docs/design/page-registry.md;FILE:apps/project-tracker/docs/metrics/_global/flows/flow-index.md,"Response <200ms, Lighthouse ≥90, timeline smooth; artifacts: page.tsx, activity-timeline.tsx, activity-filters.tsx",Backlog,"Activities listed, timeline smooth, filters working",21,ARTIFACT:apps/web/src/app/activities/page.tsx;ARTIFACT:apps/web/src/components/tasks/activity-timeline.tsx;ARTIFACT:apps/web/src/components/tasks/activity-filters.tsx;EVIDENCE:.specify/sprints/sprint-21/attestations/PG-080/context_ack.json,GATE:lighthouse-gte-90;VALIDATE:pnpm --filter @intelliflow/web typecheck;VALIDATE:pnpm --filter @intelliflow/web test --run,90/180/360,2026-10-12,2026-10-18,0,IFC-089:FS,
PG-081,Core CRM,Tasks,CRM FE+BE (STOA-Foundation),PG-080,FILE:.specify/memory/Framework.md;FILE:audit-matrix.yml;ENV:Task management;ENV:assignments;FILE:apps/web/src/app/(crm)/activities/page.tsx;FILE:docs/design/sitemap.md;FILE:docs/design/ui-flow-mapping.md;FILE:docs/design/page-registry.md;FILE:apps/project-tracker/docs/metrics/_global/flows/flow-index.md,"Response <200ms, Lighthouse ≥90, tasks tracked; artifacts: page.tsx, task-manager.tsx, task-reminder.ts",Backlog,"Tasks managed, assignments working, reminders sent",21,ARTIFACT:apps/web/src/app/tasks/(list)/page.tsx;ARTIFACT:apps/web/src/components/tasks/task-manager.tsx;ARTIFACT:apps/web/src/lib/tasks/task-reminder.ts;EVIDENCE:.specify/sprints/sprint-21/attestations/PG-081/context_ack.json,GATE:lighthouse-gte-90;VALIDATE:pnpm --filter @intelliflow/web typecheck;VALIDATE:pnpm --filter @intelliflow/web test --run,60/120/240,2026-10-14,2026-10-16,0,PG-080:FS,
PG-082,Core CRM,Task Detail,CRM FE+BE (STOA-Foundation),PG-081,FILE:.specify/memory/Framework.md;FILE:audit-matrix.yml;ENV:Task view;ENV:subtasks;ENV:comments;FILE:apps/web/src/app/(crm)/tasks/page.tsx;FILE:docs/design/sitemap.md;FILE:docs/design/ui-flow-mapping.md;FILE:docs/design/page-registry.md;FILE:apps/project-tracker/docs/metrics/_global/flows/flow-index.md,"Response <200ms, Lighthouse ≥90, collaboration enabled; artifacts: page.tsx, task-detail.tsx, task-comments.tsx",Backlog,"Details shown, subtasks managed, comments working",22,ARTIFACT:apps/web/src/app/tasks/[id]/page.tsx;ARTIFACT:apps/web/src/components/tasks/task-detail.tsx;ARTIFACT:apps/web/src/components/tasks/task-comments.tsx;EVIDENCE:.specify/sprints/sprint-22/attestations/PG-082/context_ack.json,GATE:lighthouse-gte-90;VALIDATE:pnpm --filter @intelliflow/web typecheck;VALIDATE:pnpm --filter @intelliflow/web test --run,60/120/240,2026-10-18,2026-10-20,0,PG-081:FS,
DOC-001,Strategy & Documentation,Company & Product Master Brief (single source of truth),CEO + All Leads (STOA-Leadership),,FILE:.specify/memory/Framework.md;FILE:audit-matrix.yml;ENV:Stakeholder workshop (CEO/PM/Tech Lead); access to existing notes;ENV:competitive context;ENV:and current product scope;FILE:docs/shared/review-checklist.md;FILE:docs/operations/pr-checklist.md,"Master brief created and reviewed covering: product definition, vision, target customers (ICP), personas, positioning, value proposition, differentiation, success metrics, scope/out-of-scope, tone of voice, and visual identity direction; published as tracked docs and referenced from CLAUDE.md/README as grounding source; targets: >=100%; verified by: pnpm lint",Completed,100% required sections filled; ≤5 open questions; referenced by agents/CI docs checks; updated_at + owner present,0,ARTIFACT:docs/**;EVIDENCE:.specify/sprints/sprint-0/attestations/DOC-001/attestation.json,VALIDATE:pnpm lint,120/240/480,2025-12-14,2025-12-22,100,,
BRAND-001,Brand & Design,"Visual Identity System (palette, typography, spacing, logo usage)",UX Designer + Frontend Dev (STOA-Domain),DOC-001,FILE:.specify/memory/Framework.md;FILE:audit-matrix.yml;ENV:Access to any existing brand assets; decision-maker availability for final selection;FILE:docs/planning/DDD-context-map.puml;FILE:packages/db/prisma/schema.prisma;FILE:docs/operations/quality-gates.md;FILE:docs/company/brand/visual-identity.md;FILE:docs/company/master-brief.md,"Defined palette (primary/secondary/neutral), typography scale, spacing system, iconography guidance, and basic component styling principles; includes do/don’t examples; exported as machine-readable tokens (JSON) and documented usage guidance; verified by: pnpm lint",Completed,Palette + type scale defined; tokens generated; 1 review iteration max; consistency checklist created,0,ARTIFACT:docs/company/brand/visual-identity.md;docs/company/brand/palette.tokens.json;docs/company/brand/typography.tokens.json;docs/company/brand/spacing.tokens.json;EVIDENCE:.specify/sprints/sprint-0/attestations/BRAND-001/attestation.json;ARTIFACT:docs/design/mockups/*;ARTIFACT:docs/company/brand/design-system-preview.html;ARTIFACT:apps/web/public/fonts/MaterialSymbolsOutlined.woff2,VALIDATE:pnpm lint;AUDIT:design-review;AUDIT:code-review,120/240/480,2025-12-16,2025-12-24,100,DOC-001:FS,
BRAND-002,Design System,Design Tokens Integration Plan (Tailwind/shadcn theme mapping),Frontend Dev + UX Designer (STOA-Domain),"BRAND-001,ENV-002-AI",FILE:.specify/memory/Framework.md;FILE:audit-matrix.yml;ENV:Tailwind + shadcn/ui baseline present; agreement on token naming convention;FILE:docs/design/token-mapping.md;FILE:docs/company/brand/visual-identity.md;FILE:eslint.config.mjs,"Mapping document from brand tokens to Tailwind/shadcn variables created; includes light/dark theme rules, semantic color tokens, component states, and migration guidelines; produces a minimal theme reference"" page spec""; targets: >=90%, zero errors; verified by: pnpm lint",Completed,Token mapping coverage ≥90% of components used in Sprint 0/1; zero ambiguous token names; theme reference spec approved,1,ARTIFACT:docs/design/token-mapping.md;docs/design/theme-reference-spec.md;docs/design/token-naming.md;EVIDENCE:.specify/sprints/sprint-1/attestations/BRAND-002/attestation.json,VALIDATE:pnpm lint,90/180/360,2025-12-28,2026-01-06,100,"BRAND-001:FS,ENV-002-AI:FS",
